# Kagisho Connect / Phase 2 complete / Final submission 02 November 2026

Schedule from MS Project XML, 2026-08-18 to 2026-11-02, status date 2026-10-13, 4 hours a day, A marks actual dates.
Phase 3 delivery plan aligned to ITC327W assessment; status 13 October 2026
Group ELEV8

## Calendars

- Kagisho student calendar - 4h weekdays: Mon-Fri 08:00-12:00; Sat-Sun off.

## Resources

| Resource | Group | Notes |
| --- | --- | --- |
| R Molefi | Staff UI / project planning | Updated SRS roster; proposed assignment. Overlapping tasks share capacity. |
| IR Salam | Coordination / SRS / acceptance | Updated SRS roster; proposed assignment. Overlapping tasks share capacity. |
| T Maqala | Flutter sequence / web implementation | Updated SRS roster; proposed assignment. Overlapping tasks share capacity. |
| KG Moticoe | Backend / repository | Updated SRS roster; proposed assignment. Overlapping tasks share capacity. |
| SI Ditabe | Architecture / ASP.NET sequence | Updated SRS roster; proposed assignment. Overlapping tasks share capacity. |
| ME Kwetle | ERD / Flutter implementation | Updated SRS roster; proposed assignment. Overlapping tasks share capacity. |
| KO Selahla | Use cases / notifications | Updated SRS roster; proposed assignment. Overlapping tasks share capacity. |
| R Molelekwa | Flutter UI / testing | Updated SRS roster; proposed assignment. Overlapping tasks share capacity. |

## Schedule

| ID | WBS | Task | Type | Duration | Start | Finish | Predecessors | Complete | Baseline start | Baseline finish | Baseline duration | Constraint | Resources | Work | Actual work | Delivery status |
| --- | --- | --- | --- | --- | --- | --- | --- | --- | --- | --- | --- | --- | --- | --- | --- | --- |
| 1 | 1 | **Phase 1 / Requirements and feasibility - complete** |  | 10d | 2026-08-18 A | 2026-08-31 A |  | 100% | 2026-08-18 | 2026-08-31 | 10d |  |  | 68h | 68h | Complete - confirmed 13 Oct 2026 |
| 2 | 1.1 | Group kick-off and role allocation |  | 1d | 2026-08-18 A | 2026-08-18 A |  | 100% | 2026-08-18 | 2026-08-18 | 1d | start no earlier than 2026-08-18 | R Molefi [50%] | 2h | 2h | Complete - confirmed 13 Oct 2026 |
| 3 | 1.2 | Select and document school communication project scope |  | 1d | 2026-08-18 A | 2026-08-18 A | 2SS | 100% | 2026-08-18 | 2026-08-18 | 1d | start no earlier than 2026-08-18 | R Molefi [50%] | 2h | 2h | Complete - confirmed 13 Oct 2026 |
| 4 | 1.3 | Identify school stakeholders and arrange engagement |  | 1d | 2026-08-19 A | 2026-08-19 A | 3 | 100% | 2026-08-19 | 2026-08-19 | 1d | start no earlier than 2026-08-19 | IR Salam | 4h | 4h | Complete - confirmed 13 Oct 2026 |
| 5 | 1.4 | Plan stakeholder interview and current-process evidence |  | 1d | 2026-08-20 A | 2026-08-20 A | 4 | 100% | 2026-08-20 | 2026-08-20 | 1d | start no earlier than 2026-08-20 | IR Salam | 4h | 4h | Complete - confirmed 13 Oct 2026 |
| 6 | 1.5 | Prepare school communication problem analysis |  | 2d | 2026-08-21 A | 2026-08-24 A | 5 | 100% | 2026-08-21 | 2026-08-24 | 2d | start no earlier than 2026-08-21 | IR Salam | 8h | 8h | Complete - confirmed 13 Oct 2026 |
| 7 | 1.6 | Draft Kagisho SRS introduction, scope and objectives |  | 2d | 2026-08-24 A | 2026-08-25 A | 6SS+1d | 100% | 2026-08-24 | 2026-08-25 | 2d | start no earlier than 2026-08-24 | T Maqala [50%] | 4h | 4h | Complete - confirmed 13 Oct 2026 |
| 8 | 1.7 | Define functional requirements and measurable acceptance |  | 2d | 2026-08-25 A | 2026-08-26 A | 7SS+1d | 100% | 2026-08-25 | 2026-08-26 | 2d | start no earlier than 2026-08-25 | T Maqala [50%] | 4h | 4h | Complete - confirmed 13 Oct 2026 |
| 9 | 1.8 | Define Flutter, ASP.NET and Supabase integration requirements |  | 1d | 2026-08-26 A | 2026-08-26 A | 8SS+1d | 100% | 2026-08-26 | 2026-08-26 | 1d | start no earlier than 2026-08-26 | KG Moticoe | 4h | 4h | Complete - confirmed 13 Oct 2026 |
| 10 | 1.9 | Assess technical, operational, economic and other feasibility |  | 2d | 2026-08-26 A | 2026-08-27 A | 9SS | 100% | 2026-08-26 | 2026-08-27 | 2d | start no earlier than 2026-08-26 | ME Kwetle | 8h | 8h | Complete - confirmed 13 Oct 2026 |
| 11 | 1.10 | Prepare risk register and mitigation owners |  | 2d | 2026-08-27 A | 2026-08-28 A | 10SS+1d | 100% | 2026-08-27 | 2026-08-28 | 2d | start no earlier than 2026-08-27 | R Molelekwa | 8h | 8h | Complete - confirmed 13 Oct 2026 |
| 12 | 1.11 | Resolve scope conflicts and update requirements change log |  | 1d | 2026-08-28 A | 2026-08-28 A | 11SS+1d | 100% | 2026-08-28 | 2026-08-28 | 1d | start no earlier than 2026-08-28 | T Maqala | 4h | 4h | Complete - confirmed 13 Oct 2026 |
| 13 | 1.12 | Set up GitHub repository and evidence structure |  | 1d | 2026-08-28 A | 2026-08-28 A | 12SS | 100% | 2026-08-28 | 2026-08-28 | 1d | start no earlier than 2026-08-28 | KO Selahla | 4h | 4h | Complete - confirmed 13 Oct 2026 |
| 14 | 1.13 | Update Microsoft Project and contribution tracker |  | 1d | 2026-08-28 A | 2026-08-28 A | 13SS | 100% | 2026-08-28 | 2026-08-28 | 1d | start no earlier than 2026-08-28 | R Molefi | 4h | 4h | Complete - confirmed 13 Oct 2026 |
| 15 | 1.14 | Compile stakeholder requirement-confirmation evidence |  | 1d | 2026-08-31 A | 2026-08-31 A | 12 | 100% | 2026-08-31 | 2026-08-31 | 1d | start no earlier than 2026-08-31 | IR Salam | 4h | 4h | Complete - confirmed 13 Oct 2026 |
| 16 | 1.15 | Compile and review Phase 1 submission pack |  | 1d | 2026-08-31 A | 2026-08-31 A | 14, 15SS, 10, 11, 12, 13 | 100% | 2026-08-31 | 2026-08-31 | 1d | start no earlier than 2026-08-31 | R Molefi | 4h | 4h | Complete - confirmed 13 Oct 2026 |
| 17 | 1.16 | Milestone: Phase 1 planned submission | milestone | 0d | 2026-08-31 A | 2026-08-31 A | 16 | 100% | 2026-08-31 | 2026-08-31 | 0d | start no earlier than 2026-08-31 |  |  |  | Complete - confirmed 13 Oct 2026 |
| 18 | 2 | **Phase 2 / Design and second submission - complete** |  | 31d | 2026-09-01 A | 2026-10-13 A |  | 100% | 2026-09-01 | 2026-09-11 | 9d |  |  | 96h | 96h | Complete - confirmed 13 Oct 2026 |
| 19 | 2.1 | Review scope, feedback and diagram inconsistencies |  | 2d | 2026-09-01 A | 2026-09-02 A | 17 | 100% | 2026-09-01 | 2026-09-02 | 2d | start no earlier than 2026-09-01 | T Maqala | 8h | 8h | Complete - confirmed 13 Oct 2026 |
| 20 | 2.2 | Prepare use-case diagram and actor permissions |  | 2d | 2026-09-03 A | 2026-09-04 A | 19 | 100% | 2026-09-03 | 2026-09-04 | 2d | start no earlier than 2026-09-03 | KO Selahla | 8h | 8h | Complete - confirmed 13 Oct 2026 |
| 21 | 2.3 | Design Flutter sequence: authenticate, view notice and document |  | 2d | 2026-09-07 A | 2026-09-08 A | 20 | 100% | 2026-09-07 | 2026-09-08 | 2d | start no earlier than 2026-09-07 | T Maqala | 8h | 8h | Complete - confirmed 13 Oct 2026 |
| 22 | 2.4 | Design ASP.NET publishing sequence |  | 2d | 2026-09-07 A | 2026-09-08 A | 20 | 100% |  |  |  | start no earlier than 2026-09-07 | SI Ditabe | 8h | 8h | Complete - confirmed 13 Oct 2026 |
| 23 | 2.5 | Refine ERD and database/storage schema |  | 2d | 2026-09-08 A | 2026-09-09 A | 20 | 100% | 2026-09-08 | 2026-09-09 | 2d | start no earlier than 2026-09-08 | ME Kwetle | 8h | 8h | Complete - confirmed 13 Oct 2026 |
| 24 | 2.6 | Prepare Flutter parent wireframes and navigation |  | 2d | 2026-09-09 A | 2026-09-10 A | 21 | 100% | 2026-09-09 | 2026-09-10 | 2d | start no earlier than 2026-09-09 | R Molelekwa | 8h | 8h | Complete - confirmed 13 Oct 2026 |
| 25 | 2.7 | Prepare ASP.NET staff portal wireframes |  | 2d | 2026-09-09 A | 2026-09-10 A | 21 | 100% | 2026-09-09 | 2026-09-10 | 2d | start no earlier than 2026-09-09 | R Molefi | 8h | 8h | Complete - confirmed 13 Oct 2026 |
| 26 | 2.8 | Prepare system architecture and integration diagram |  | 2d | 2026-09-03 A | 2026-09-04 A | 19 | 100% | 2026-09-03 | 2026-09-04 | 2d | start no earlier than 2026-09-03 | SI Ditabe | 8h | 8h | Complete - confirmed 13 Oct 2026 |
| 27 | 2.9 | Review and approve complete system design pack |  | 1d | 2026-09-11 A | 2026-09-11 A | 23, 24, 25, 26, 22 | 100% | 2026-09-11 | 2026-09-11 | 1d | start no earlier than 2026-09-11 | IR Salam | 4h | 4h | Complete - confirmed 13 Oct 2026 |
| 28 | 2.10 | Milestone: Design and diagram pack approved | milestone | 0d | 2026-09-11 A | 2026-09-11 A | 27 | 100% | 2026-09-11 | 2026-09-11 | 0d | start no earlier than 2026-09-11 |  |  |  | Complete - confirmed 13 Oct 2026 |

Notes:
- 1: COMPLETED: Phases 1 and 2 confirmed complete by the project owner on 13 October 2026. Historical task-level start/finish dates and work are schedule estimates, not verified timesheet actuals. Original baseline retained where available. Phase summary rolls up its children. TRACKING IMPORT REPAIR: explicit Actual Start and Actual Finish use the historical schedule dates as provisional accounting dates so the confirmed completion can be imported consistently. These dates and hours are estimates, not separately verified historical records. Phase 2 completion by 13 October is confirmed.
- 2: COMPLETED: Phases 1 and 2 confirmed complete by the project owner on 13 October 2026. Historical task-level start/finish dates and work are schedule estimates, not verified timesheet actuals. Original baseline retained where available. Completion status is confirmed; precise historical actual dates were not supplied. TRACKING IMPORT REPAIR: explicit Actual Start and Actual Finish use the historical schedule dates as provisional accounting dates so the confirmed completion can be imported consistently. These dates and hours are estimates, not separately verified historical records. Phase 2 completion by 13 October is confirmed.
- 3: COMPLETED: Phases 1 and 2 confirmed complete by the project owner on 13 October 2026. Historical task-level start/finish dates and work are schedule estimates, not verified timesheet actuals. Original baseline retained where available. Completion status is confirmed; precise historical actual dates were not supplied. TRACKING IMPORT REPAIR: explicit Actual Start and Actual Finish use the historical schedule dates as provisional accounting dates so the confirmed completion can be imported consistently. These dates and hours are estimates, not separately verified historical records. Phase 2 completion by 13 October is confirmed.
- 4: COMPLETED: Phases 1 and 2 confirmed complete by the project owner on 13 October 2026. Historical task-level start/finish dates and work are schedule estimates, not verified timesheet actuals. Original baseline retained where available. Completion status is confirmed; precise historical actual dates were not supplied. TRACKING IMPORT REPAIR: explicit Actual Start and Actual Finish use the historical schedule dates as provisional accounting dates so the confirmed completion can be imported consistently. These dates and hours are estimates, not separately verified historical records. Phase 2 completion by 13 October is confirmed.
- 5: COMPLETED: Phases 1 and 2 confirmed complete by the project owner on 13 October 2026. Historical task-level start/finish dates and work are schedule estimates, not verified timesheet actuals. Original baseline retained where available. Completion status is confirmed; precise historical actual dates were not supplied. TRACKING IMPORT REPAIR: explicit Actual Start and Actual Finish use the historical schedule dates as provisional accounting dates so the confirmed completion can be imported consistently. These dates and hours are estimates, not separately verified historical records. Phase 2 completion by 13 October is confirmed.
- 6: COMPLETED: Phases 1 and 2 confirmed complete by the project owner on 13 October 2026. Historical task-level start/finish dates and work are schedule estimates, not verified timesheet actuals. Original baseline retained where available. Completion status is confirmed; precise historical actual dates were not supplied. TRACKING IMPORT REPAIR: explicit Actual Start and Actual Finish use the historical schedule dates as provisional accounting dates so the confirmed completion can be imported consistently. These dates and hours are estimates, not separately verified historical records. Phase 2 completion by 13 October is confirmed.
- 7: COMPLETED: Phases 1 and 2 confirmed complete by the project owner on 13 October 2026. Historical task-level start/finish dates and work are schedule estimates, not verified timesheet actuals. Original baseline retained where available. Completion status is confirmed; precise historical actual dates were not supplied. TRACKING IMPORT REPAIR: explicit Actual Start and Actual Finish use the historical schedule dates as provisional accounting dates so the confirmed completion can be imported consistently. These dates and hours are estimates, not separately verified historical records. Phase 2 completion by 13 October is confirmed.
- 8: COMPLETED: Phases 1 and 2 confirmed complete by the project owner on 13 October 2026. Historical task-level start/finish dates and work are schedule estimates, not verified timesheet actuals. Original baseline retained where available. Completion status is confirmed; precise historical actual dates were not supplied. TRACKING IMPORT REPAIR: explicit Actual Start and Actual Finish use the historical schedule dates as provisional accounting dates so the confirmed completion can be imported consistently. These dates and hours are estimates, not separately verified historical records. Phase 2 completion by 13 October is confirmed.
- 9: COMPLETED: Phases 1 and 2 confirmed complete by the project owner on 13 October 2026. Historical task-level start/finish dates and work are schedule estimates, not verified timesheet actuals. Original baseline retained where available. Completion status is confirmed; precise historical actual dates were not supplied. TRACKING IMPORT REPAIR: explicit Actual Start and Actual Finish use the historical schedule dates as provisional accounting dates so the confirmed completion can be imported consistently. These dates and hours are estimates, not separately verified historical records. Phase 2 completion by 13 October is confirmed.
- 10: COMPLETED: Phases 1 and 2 confirmed complete by the project owner on 13 October 2026. Historical task-level start/finish dates and work are schedule estimates, not verified timesheet actuals. Original baseline retained where available. Completion status is confirmed; precise historical actual dates were not supplied. TRACKING IMPORT REPAIR: explicit Actual Start and Actual Finish use the historical schedule dates as provisional accounting dates so the confirmed completion can be imported consistently. These dates and hours are estimates, not separately verified historical records. Phase 2 completion by 13 October is confirmed.
- 11: COMPLETED: Phases 1 and 2 confirmed complete by the project owner on 13 October 2026. Historical task-level start/finish dates and work are schedule estimates, not verified timesheet actuals. Original baseline retained where available. Completion status is confirmed; precise historical actual dates were not supplied. TRACKING IMPORT REPAIR: explicit Actual Start and Actual Finish use the historical schedule dates as provisional accounting dates so the confirmed completion can be imported consistently. These dates and hours are estimates, not separately verified historical records. Phase 2 completion by 13 October is confirmed.
- 12: COMPLETED: Phases 1 and 2 confirmed complete by the project owner on 13 October 2026. Historical task-level start/finish dates and work are schedule estimates, not verified timesheet actuals. Original baseline retained where available. Completion status is confirmed; precise historical actual dates were not supplied. TRACKING IMPORT REPAIR: explicit Actual Start and Actual Finish use the historical schedule dates as provisional accounting dates so the confirmed completion can be imported consistently. These dates and hours are estimates, not separately verified historical records. Phase 2 completion by 13 October is confirmed.
- 13: COMPLETED: Phases 1 and 2 confirmed complete by the project owner on 13 October 2026. Historical task-level start/finish dates and work are schedule estimates, not verified timesheet actuals. Original baseline retained where available. Completion status is confirmed; precise historical actual dates were not supplied. TRACKING IMPORT REPAIR: explicit Actual Start and Actual Finish use the historical schedule dates as provisional accounting dates so the confirmed completion can be imported consistently. These dates and hours are estimates, not separately verified historical records. Phase 2 completion by 13 October is confirmed.
- 14: COMPLETED: Phases 1 and 2 confirmed complete by the project owner on 13 October 2026. Historical task-level start/finish dates and work are schedule estimates, not verified timesheet actuals. Original baseline retained where available. Completion status is confirmed; precise historical actual dates were not supplied. TRACKING IMPORT REPAIR: explicit Actual Start and Actual Finish use the historical schedule dates as provisional accounting dates so the confirmed completion can be imported consistently. These dates and hours are estimates, not separately verified historical records. Phase 2 completion by 13 October is confirmed.
- 15: COMPLETED: Phases 1 and 2 confirmed complete by the project owner on 13 October 2026. Historical task-level start/finish dates and work are schedule estimates, not verified timesheet actuals. Original baseline retained where available. Completion status is confirmed; precise historical actual dates were not supplied. TRACKING IMPORT REPAIR: explicit Actual Start and Actual Finish use the historical schedule dates as provisional accounting dates so the confirmed completion can be imported consistently. These dates and hours are estimates, not separately verified historical records. Phase 2 completion by 13 October is confirmed.
- 16: COMPLETED: Phases 1 and 2 confirmed complete by the project owner on 13 October 2026. Historical task-level start/finish dates and work are schedule estimates, not verified timesheet actuals. Original baseline retained where available. Completion status is confirmed; precise historical actual dates were not supplied. TRACKING IMPORT REPAIR: explicit Actual Start and Actual Finish use the historical schedule dates as provisional accounting dates so the confirmed completion can be imported consistently. These dates and hours are estimates, not separately verified historical records. Phase 2 completion by 13 October is confirmed.
- 17: COMPLETED: Phases 1 and 2 confirmed complete by the project owner on 13 October 2026. Historical task-level start/finish dates and work are schedule estimates, not verified timesheet actuals. Original baseline retained where available. Completion status is confirmed; precise historical actual dates were not supplied. TRACKING IMPORT REPAIR: explicit Actual Start and Actual Finish use the historical schedule dates as provisional accounting dates so the confirmed completion can be imported consistently. These dates and hours are estimates, not separately verified historical records. Phase 2 completion by 13 October is confirmed.
- 18: COMPLETED: Phases 1 and 2 confirmed complete by the project owner on 13 October 2026. Historical task-level start/finish dates and work are schedule estimates, not verified timesheet actuals. Original baseline retained where available. Phase summary rolls up its children. TRACKING IMPORT REPAIR: explicit Actual Start and Actual Finish use the historical schedule dates as provisional accounting dates so the confirmed completion can be imported consistently. These dates and hours are estimates, not separately verified historical records. Phase 2 completion by 13 October is confirmed.
- 19: COMPLETED: Phases 1 and 2 confirmed complete by the project owner on 13 October 2026. Historical task-level start/finish dates and work are schedule estimates, not verified timesheet actuals. Original baseline retained where available. Completion status is confirmed; precise historical actual dates were not supplied. TRACKING IMPORT REPAIR: explicit Actual Start and Actual Finish use the historical schedule dates as provisional accounting dates so the confirmed completion can be imported consistently. These dates and hours are estimates, not separately verified historical records. Phase 2 completion by 13 October is confirmed.
- 20: COMPLETED: Phases 1 and 2 confirmed complete by the project owner on 13 October 2026. Historical task-level start/finish dates and work are schedule estimates, not verified timesheet actuals. Original baseline retained where available. Completion status is confirmed; precise historical actual dates were not supplied. TRACKING IMPORT REPAIR: explicit Actual Start and Actual Finish use the historical schedule dates as provisional accounting dates so the confirmed completion can be imported consistently. These dates and hours are estimates, not separately verified historical records. Phase 2 completion by 13 October is confirmed.
- 21: COMPLETED: Phases 1 and 2 confirmed complete by the project owner on 13 October 2026. Historical task-level start/finish dates and work are schedule estimates, not verified timesheet actuals. Original baseline retained where available. Completion status is confirmed; precise historical actual dates were not supplied. TRACKING IMPORT REPAIR: explicit Actual Start and Actual Finish use the historical schedule dates as provisional accounting dates so the confirmed completion can be imported consistently. These dates and hours are estimates, not separately verified historical records. Phase 2 completion by 13 October is confirmed.
- 22: COMPLETED: Phases 1 and 2 confirmed complete by the project owner on 13 October 2026. Historical task-level start/finish dates and work are schedule estimates, not verified timesheet actuals. Original baseline retained where available. Completion status is confirmed; precise historical actual dates were not supplied. TRACKING IMPORT REPAIR: explicit Actual Start and Actual Finish use the historical schedule dates as provisional accounting dates so the confirmed completion can be imported consistently. These dates and hours are estimates, not separately verified historical records. Phase 2 completion by 13 October is confirmed.
- 23: COMPLETED: Phases 1 and 2 confirmed complete by the project owner on 13 October 2026. Historical task-level start/finish dates and work are schedule estimates, not verified timesheet actuals. Original baseline retained where available. Completion status is confirmed; precise historical actual dates were not supplied. TRACKING IMPORT REPAIR: explicit Actual Start and Actual Finish use the historical schedule dates as provisional accounting dates so the confirmed completion can be imported consistently. These dates and hours are estimates, not separately verified historical records. Phase 2 completion by 13 October is confirmed.
- 24: COMPLETED: Phases 1 and 2 confirmed complete by the project owner on 13 October 2026. Historical task-level start/finish dates and work are schedule estimates, not verified timesheet actuals. Original baseline retained where available. Completion status is confirmed; precise historical actual dates were not supplied. TRACKING IMPORT REPAIR: explicit Actual Start and Actual Finish use the historical schedule dates as provisional accounting dates so the confirmed completion can be imported consistently. These dates and hours are estimates, not separately verified historical records. Phase 2 completion by 13 October is confirmed.
- 25: COMPLETED: Phases 1 and 2 confirmed complete by the project owner on 13 October 2026. Historical task-level start/finish dates and work are schedule estimates, not verified timesheet actuals. Original baseline retained where available. Completion status is confirmed; precise historical actual dates were not supplied. TRACKING IMPORT REPAIR: explicit Actual Start and Actual Finish use the historical schedule dates as provisional accounting dates so the confirmed completion can be imported consistently. These dates and hours are estimates, not separately verified historical records. Phase 2 completion by 13 October is confirmed.
- 26: COMPLETED: Phases 1 and 2 confirmed complete by the project owner on 13 October 2026. Historical task-level start/finish dates and work are schedule estimates, not verified timesheet actuals. Original baseline retained where available. Completion status is confirmed; precise historical actual dates were not supplied. TRACKING IMPORT REPAIR: explicit Actual Start and Actual Finish use the historical schedule dates as provisional accounting dates so the confirmed completion can be imported consistently. These dates and hours are estimates, not separately verified historical records. Phase 2 completion by 13 October is confirmed.
- 27: COMPLETED: Phases 1 and 2 confirmed complete by the project owner on 13 October 2026. Historical task-level start/finish dates and work are schedule estimates, not verified timesheet actuals. Original baseline retained where available. Completion status is confirmed; precise historical actual dates were not supplied. TRACKING IMPORT REPAIR: explicit Actual Start and Actual Finish use the historical schedule dates as provisional accounting dates so the confirmed completion can be imported consistently. These dates and hours are estimates, not separately verified historical records. Phase 2 completion by 13 October is confirmed.
- 28: COMPLETED: Phases 1 and 2 confirmed complete by the project owner on 13 October 2026. Historical task-level start/finish dates and work are schedule estimates, not verified timesheet actuals. Original baseline retained where available. Completion status is confirmed; precise historical actual dates were not supplied. TRACKING IMPORT REPAIR: explicit Actual Start and Actual Finish use the historical schedule dates as provisional accounting dates so the confirmed completion can be imported consistently. These dates and hours are estimates, not separately verified historical records. Phase 2 completion by 13 October is confirmed.

| ID | WBS | Task | Type | Duration | Start | Finish | Predecessors | Complete | Baseline start | Baseline finish | Baseline duration | Constraint | Resources | Work | Actual work | Delivery status |
| --- | --- | --- | --- | --- | --- | --- | --- | --- | --- | --- | --- | --- | --- | --- | --- | --- |
| 29 | 2.11 | **Phase 2 finalisation and submission** |  | 6d | 2026-10-06 A | 2026-10-13 A |  | 100% |  |  |  |  |  | 28h | 28h | Complete - confirmed 13 Oct 2026 |
| 30 | 2.11.1 | Finalise architecture, UML, sequences and ERD with ROLE table |  | 1d | 2026-10-06 A | 2026-10-06 A | 28 | 100% |  |  |  |  | SI Ditabe | 4h | 4h | Complete - confirmed 13 Oct 2026 |
| 31 | 2.11.2 | Finalise and review mobile and staff-portal prototype designs |  | 2d | 2026-10-07 A | 2026-10-08 A | 30 | 100% |  |  |  |  | R Molefi | 8h | 8h | Complete - confirmed 13 Oct 2026 |
| 32 | 2.11.3 | Compile updated SRS and editable design links |  | 1d | 2026-10-09 A | 2026-10-09 A | 31 | 100% |  |  |  |  | IR Salam | 4h | 4h | Complete - confirmed 13 Oct 2026 |
| 33 | 2.11.4 | Complete Phase 2 project plan and contribution tracker |  | 1d | 2026-10-09 A | 2026-10-09 A | 31 | 100% |  |  |  |  | R Molefi | 4h | 4h | Complete - confirmed 13 Oct 2026 |
| 34 | 2.11.5 | Organise Phase 2 design evidence in shared repository |  | 1d | 2026-10-09 A | 2026-10-09 A | 31 | 100% |  |  |  |  | KG Moticoe | 4h | 4h | Complete - confirmed 13 Oct 2026 |
| 35 | 2.11.6 | Complete group review and second-submission preparation |  | 1d | 2026-10-12 A | 2026-10-12 A | 32, 33, 34 | 100% |  |  |  |  | IR Salam | 4h | 4h | Complete - confirmed 13 Oct 2026 |
| 36 | 2.11.7 | Second submission / Phase 2 complete - 13 October | milestone | 0d | 2026-10-13 A | 2026-10-13 A | 35 | 100% |  |  |  |  |  |  |  | Complete - confirmed 13 Oct 2026 |
| 37 | 3 | **Phase 3 / Implementation, integration and final submission** |  | 14d | 2026-10-14 | 2026-11-02 |  |  |  |  |  |  |  | 206h |  | Remaining delivery |
| 38 | 3.1 | **Shared Supabase foundation** |  | 6d | 2026-10-14 | 2026-10-21 |  |  | 2026-09-14 | 2026-09-25 | 10d |  |  | 36h |  | Remaining delivery |
| 39 | 3.1.1 | Verify existing framework, shared environment and API contract |  | 0.5d | 2026-10-14 | 2026-10-14 | 36 |  | 2026-09-14 | 2026-09-14 | 1d | start no earlier than 2026-10-14 | KG Moticoe | 2h |  | Not started - Phase 3 |
| 40 | 3.1.2 | Implement approved ERD, ROLE table, keys and relationships |  | 2d | 2026-10-14 | 2026-10-16 | 39 |  | 2026-09-15 | 2026-09-17 | 3d | start no earlier than 2026-10-14 | KG Moticoe | 8h |  | Not started - Phase 3 |
| 41 | 3.1.3 | Implement authentication and authorised role access |  | 2d | 2026-10-16 | 2026-10-20 | 40 |  | 2026-09-18 | 2026-09-21 | 2d | start no earlier than 2026-10-16 | SI Ditabe | 8h |  | Not started - Phase 3 |
| 42 | 3.1.4 | Configure document storage and controlled downloads |  | 1d | 2026-10-16 | 2026-10-19 | 40 |  |  |  |  | start no earlier than 2026-10-16 | KG Moticoe | 4h |  | Not started - Phase 3 |
| 43 | 3.1.5 | Apply row access rules and grade audience permissions |  | 1d | 2026-10-19 | 2026-10-20 | 42 |  |  |  |  | start no earlier than 2026-10-19 | KG Moticoe | 4h |  | Not started - Phase 3 |
| 44 | 3.1.6 | Configure notification records and delivery integration |  | 1d | 2026-10-19 | 2026-10-20 | 40 |  |  |  |  | start no earlier than 2026-10-19 | KO Selahla | 4h |  | Not started - Phase 3 |
| 45 | 3.1.7 | Seed fictional accounts, grades, notices and documents |  | 0.5d | 2026-10-20 | 2026-10-20 | 41, 43, 44 |  | 2026-09-22 | 2026-09-22 | 1d | start no earlier than 2026-10-20 | KO Selahla | 2h |  | Not started - Phase 3 |
| 46 | 3.1.8 | Verify shared backend access, CRUD and document retrieval |  | 1d | 2026-10-21 | 2026-10-21 | 45 |  | 2026-09-23 | 2026-09-24 | 2d | start no earlier than 2026-10-21 | KG Moticoe | 4h |  | Not started - Phase 3 |
| 47 | 3.1.9 | Milestone: shared backend ready | milestone | 0d | 2026-10-21 | 2026-10-21 | 46 |  | 2026-09-25 | 2026-09-25 | 0d | start no earlier than 2026-10-21 |  |  |  | Not started - Phase 3 |
| 48 | 3.2 | **Flutter parent application** |  | 7.5d | 2026-10-14 | 2026-10-23 |  |  | 2026-09-28 | 2026-10-16 | 15d |  |  | 32h |  | Remaining delivery |
| 49 | 3.2.1 | Verify Flutter framework and connect application configuration |  | 1d | 2026-10-14 | 2026-10-15 | 39 |  | 2026-09-28 | 2026-09-29 | 2d | start no earlier than 2026-10-14 | ME Kwetle | 4h |  | Not started - Phase 3 |
| 50 | 3.2.2 | Build approved navigation, forms and validation |  | 2d | 2026-10-15 | 2026-10-19 | 49 |  |  |  |  | start no earlier than 2026-10-15 | ME Kwetle | 8h |  | Not started - Phase 3 |
| 51 | 3.2.3 | Connect parent registration, login and session handling |  | 1d | 2026-10-20 | 2026-10-21 | 50, 41 |  | 2026-09-30 | 2026-10-02 | 3d | start no earlier than 2026-10-20 | ME Kwetle | 4h |  | Not started - Phase 3 |
| 52 | 3.2.4 | Implement grade-filtered notice feed and detail views |  | 2d | 2026-10-22 | 2026-10-23 | 47, 51 |  | 2026-10-05 | 2026-10-07 | 3d | start no earlier than 2026-10-22 | ME Kwetle | 8h |  | Not started - Phase 3 |
| 53 | 3.2.5 | Implement document viewing and download states |  | 1d | 2026-10-22 | 2026-10-22 | 47, 50 |  | 2026-10-08 | 2026-10-13 | 4d | start no earlier than 2026-10-22 | R Molelekwa | 4h |  | Not started - Phase 3 |
| 54 | 3.2.6 | Connect parent notifications and navigation |  | 1d | 2026-10-22 | 2026-10-22 | 47, 44, 51 |  | 2026-10-14 | 2026-10-16 | 3d | start no earlier than 2026-10-22 | KO Selahla | 4h |  | Not started - Phase 3 |
| 55 | 3.2.7 | Milestone: parent core functions ready for integration | milestone | 0d | 2026-10-23 | 2026-10-23 | 52, 53, 54 |  | 2026-10-16 | 2026-10-16 | 0d | start no earlier than 2026-10-23 |  |  |  | Not started - Phase 3 |

Notes:
- 29: COMPLETED: Phases 1 and 2 confirmed complete by the project owner on 13 October 2026. Historical task-level start/finish dates and work are schedule estimates, not verified timesheet actuals. Original baseline retained where available. Phase summary rolls up its children. TRACKING IMPORT REPAIR: explicit Actual Start and Actual Finish use the historical schedule dates as provisional accounting dates so the confirmed completion can be imported consistently. These dates and hours are estimates, not separately verified historical records. Phase 2 completion by 13 October is confirmed.
- 30: COMPLETED: Phases 1 and 2 confirmed complete by the project owner on 13 October 2026. Historical task-level start/finish dates and work are schedule estimates, not verified timesheet actuals. Original baseline retained where available. Completion status is confirmed; precise historical actual dates were not supplied. TRACKING IMPORT REPAIR: explicit Actual Start and Actual Finish use the historical schedule dates as provisional accounting dates so the confirmed completion can be imported consistently. These dates and hours are estimates, not separately verified historical records. Phase 2 completion by 13 October is confirmed.
- 31: COMPLETED: Phases 1 and 2 confirmed complete by the project owner on 13 October 2026. Historical task-level start/finish dates and work are schedule estimates, not verified timesheet actuals. Original baseline retained where available. Completion status is confirmed; precise historical actual dates were not supplied. TRACKING IMPORT REPAIR: explicit Actual Start and Actual Finish use the historical schedule dates as provisional accounting dates so the confirmed completion can be imported consistently. These dates and hours are estimates, not separately verified historical records. Phase 2 completion by 13 October is confirmed.
- 32: COMPLETED: Phases 1 and 2 confirmed complete by the project owner on 13 October 2026. Historical task-level start/finish dates and work are schedule estimates, not verified timesheet actuals. Original baseline retained where available. Completion status is confirmed; precise historical actual dates were not supplied. TRACKING IMPORT REPAIR: explicit Actual Start and Actual Finish use the historical schedule dates as provisional accounting dates so the confirmed completion can be imported consistently. These dates and hours are estimates, not separately verified historical records. Phase 2 completion by 13 October is confirmed.
- 33: COMPLETED: Phases 1 and 2 confirmed complete by the project owner on 13 October 2026. Historical task-level start/finish dates and work are schedule estimates, not verified timesheet actuals. Original baseline retained where available. Completion status is confirmed; precise historical actual dates were not supplied. TRACKING IMPORT REPAIR: explicit Actual Start and Actual Finish use the historical schedule dates as provisional accounting dates so the confirmed completion can be imported consistently. These dates and hours are estimates, not separately verified historical records. Phase 2 completion by 13 October is confirmed.
- 34: COMPLETED: Phases 1 and 2 confirmed complete by the project owner on 13 October 2026. Historical task-level start/finish dates and work are schedule estimates, not verified timesheet actuals. Original baseline retained where available. Completion status is confirmed; precise historical actual dates were not supplied. TRACKING IMPORT REPAIR: explicit Actual Start and Actual Finish use the historical schedule dates as provisional accounting dates so the confirmed completion can be imported consistently. These dates and hours are estimates, not separately verified historical records. Phase 2 completion by 13 October is confirmed.
- 35: COMPLETED: Phases 1 and 2 confirmed complete by the project owner on 13 October 2026. Historical task-level start/finish dates and work are schedule estimates, not verified timesheet actuals. Original baseline retained where available. Completion status is confirmed; precise historical actual dates were not supplied. TRACKING IMPORT REPAIR: explicit Actual Start and Actual Finish use the historical schedule dates as provisional accounting dates so the confirmed completion can be imported consistently. These dates and hours are estimates, not separately verified historical records. Phase 2 completion by 13 October is confirmed.
- 36: COMPLETED: Phases 1 and 2 confirmed complete by the project owner on 13 October 2026. Historical task-level start/finish dates and work are schedule estimates, not verified timesheet actuals. Original baseline retained where available. Completion status is confirmed; precise historical actual dates were not supplied. TRACKING IMPORT REPAIR: explicit Actual Start and Actual Finish use the historical schedule dates as provisional accounting dates so the confirmed completion can be imported consistently. These dates and hours are estimates, not separately verified historical records. Phase 2 completion by 13 October is confirmed.
- 37: Summary: dates and work roll up from child tasks.
- 38: Summary: dates and work roll up from child tasks.
- 39: Use one shared Supabase project. Agree payloads and approved schema so clients can proceed in parallel. Phase 3 not started at the 13 October status date. Re-estimated prototype effort; 4 hours per assigned member per weekday. Scheduled release dates preserve the resource-balanced delivery sequence. Work is an estimate, not a timesheet.
- 40: Retain the approved ROLE table. Implement relevant CRUD and grade audience relationships from the signed-off design. Phase 3 not started at the 13 October status date. Re-estimated prototype effort; 4 hours per assigned member per weekday. Scheduled release dates preserve the resource-balanced delivery sequence. Work is an estimate, not a timesheet.
- 41: Phase 3 not started at the 13 October status date. Re-estimated prototype effort; 4 hours per assigned member per weekday. Scheduled release dates preserve the resource-balanced delivery sequence. Work is an estimate, not a timesheet.
- 42: Phase 3 not started at the 13 October status date. Re-estimated prototype effort; 4 hours per assigned member per weekday. Scheduled release dates preserve the resource-balanced delivery sequence. Work is an estimate, not a timesheet.
- 43: Phase 3 not started at the 13 October status date. Re-estimated prototype effort; 4 hours per assigned member per weekday. Scheduled release dates preserve the resource-balanced delivery sequence. Work is an estimate, not a timesheet.
- 44: Use the notification mechanism specified in the approved SRS; verify parent audience filtering. Phase 3 not started at the 13 October status date. Re-estimated prototype effort; 4 hours per assigned member per weekday. Scheduled release dates preserve the resource-balanced delivery sequence. Work is an estimate, not a timesheet.
- 45: Phase 3 not started at the 13 October status date. Re-estimated prototype effort; 4 hours per assigned member per weekday. Scheduled release dates preserve the resource-balanced delivery sequence. Work is an estimate, not a timesheet.
- 46: Phase 3 not started at the 13 October status date. Re-estimated prototype effort; 4 hours per assigned member per weekday. Scheduled release dates preserve the resource-balanced delivery sequence. Work is an estimate, not a timesheet.
- 47: Phase 3 not started at the 13 October status date. Re-estimated prototype effort; 4 hours per assigned member per weekday. Scheduled release dates preserve the resource-balanced delivery sequence. Work is an estimate, not a timesheet.
- 48: Summary: dates and work roll up from child tasks.
- 49: Phase 3 not started at the 13 October status date. Re-estimated prototype effort; 4 hours per assigned member per weekday. Scheduled release dates preserve the resource-balanced delivery sequence. Work is an estimate, not a timesheet.
- 50: Reuse completed Phase 2 designs. Prepare UI against the agreed contract while backend implementation proceeds. Phase 3 not started at the 13 October status date. Re-estimated prototype effort; 4 hours per assigned member per weekday. Scheduled release dates preserve the resource-balanced delivery sequence. Work is an estimate, not a timesheet.
- 51: Phase 3 not started at the 13 October status date. Re-estimated prototype effort; 4 hours per assigned member per weekday. Scheduled release dates preserve the resource-balanced delivery sequence. Work is an estimate, not a timesheet.
- 52: Phase 3 not started at the 13 October status date. Re-estimated prototype effort; 4 hours per assigned member per weekday. Scheduled release dates preserve the resource-balanced delivery sequence. Work is an estimate, not a timesheet.
- 53: Phase 3 not started at the 13 October status date. Re-estimated prototype effort; 4 hours per assigned member per weekday. Scheduled release dates preserve the resource-balanced delivery sequence. Work is an estimate, not a timesheet.
- 54: Phase 3 not started at the 13 October status date. Re-estimated prototype effort; 4 hours per assigned member per weekday. Scheduled release dates preserve the resource-balanced delivery sequence. Work is an estimate, not a timesheet.
- 55: Phase 3 not started at the 13 October status date. Re-estimated prototype effort; 4 hours per assigned member per weekday. Scheduled release dates preserve the resource-balanced delivery sequence. Work is an estimate, not a timesheet.

| ID | WBS | Task | Type | Duration | Start | Finish | Predecessors | Baseline start | Baseline finish | Baseline duration | Constraint | Deadline | Resources | Work | Delivery status |
| --- | --- | --- | --- | --- | --- | --- | --- | --- | --- | --- | --- | --- | --- | --- | --- |
| 56 | 3.3 | **ASP.NET staff portal** |  | 7.5d | 2026-10-14 | 2026-10-23 |  | 2026-09-28 | 2026-10-16 | 15d |  |  |  | 32h | Remaining delivery |
| 57 | 3.3.1 | Verify ASP.NET framework and shared configuration |  | 1d | 2026-10-14 | 2026-10-15 | 39 | 2026-09-28 | 2026-09-29 | 2d | start no earlier than 2026-10-14 |  | T Maqala | 4h | Not started - Phase 3 |
| 58 | 3.3.2 | Build approved staff forms, navigation and validation |  | 2d | 2026-10-15 | 2026-10-19 | 57 |  |  |  | start no earlier than 2026-10-15 |  | R Molefi | 8h | Not started - Phase 3 |
| 59 | 3.3.3 | Connect staff login and protected navigation |  | 1d | 2026-10-20 | 2026-10-21 | 41, 58 | 2026-09-30 | 2026-10-02 | 3d | start no earlier than 2026-10-20 |  | SI Ditabe | 4h | Not started - Phase 3 |
| 60 | 3.3.4 | Implement create, edit and remove announcement functions |  | 2d | 2026-10-22 | 2026-10-23 | 47, 59 | 2026-10-05 | 2026-10-08 | 4d | start no earlier than 2026-10-22 |  | T Maqala | 8h | Not started - Phase 3 |
| 61 | 3.3.5 | Implement document upload and attachment management |  | 1d | 2026-10-22 | 2026-10-22 | 47, 58 | 2026-10-09 | 2026-10-14 | 4d | start no earlier than 2026-10-22 |  | R Molefi | 4h | Not started - Phase 3 |
| 62 | 3.3.6 | Connect grade targeting, priority and notification triggers |  | 1d | 2026-10-22 | 2026-10-22 | 47, 59, 44 | 2026-10-15 | 2026-10-16 | 2d | start no earlier than 2026-10-22 |  | SI Ditabe | 4h | Not started - Phase 3 |
| 63 | 3.3.7 | Milestone: staff core functions ready for integration | milestone | 0d | 2026-10-23 | 2026-10-23 | 60, 61, 62 | 2026-10-16 | 2026-10-16 | 0d | start no earlier than 2026-10-23 |  |  |  | Not started - Phase 3 |
| 64 | 3.4 | **Shared processes, practical checks and corrections** |  | 4d | 2026-10-26 | 2026-10-29 |  | 2026-10-19 | 2026-11-06 | 15d |  |  |  | 60h | Remaining delivery |
| 65 | 3.4.1 | Integrate both clients with the same Supabase data |  | 1d | 2026-10-26 | 2026-10-26 | 55, 63 | 2026-10-19 | 2026-10-21 | 3d | start no earlier than 2026-10-26 |  | ME Kwetle; T Maqala; KG Moticoe | 12h | Not started - Phase 3 |
| 66 | 3.4.2 | Demonstrate process 1: publish notice and view on mobile |  | 0.5d | 2026-10-27 | 2026-10-27 | 65 | 2026-10-22 | 2026-10-26 | 3d | start no earlier than 2026-10-27 |  | R Molefi; R Molelekwa | 4h | Not started - Phase 3 |
| 67 | 3.4.3 | Demonstrate process 2: edit notice and refresh on mobile |  | 0.5d | 2026-10-27 | 2026-10-27 | 66 |  |  |  | start no earlier than 2026-10-27 |  | R Molefi; R Molelekwa | 4h | Not started - Phase 3 |
| 68 | 3.4.4 | Check permissions, validation, failures and usability |  | 1d | 2026-10-27 | 2026-10-27 | 65 | 2026-10-27 | 2026-10-29 | 3d | start no earlier than 2026-10-27 |  | KO Selahla; SI Ditabe | 8h | Not started - Phase 3 |
| 69 | 3.4.5 | Review working prototype against SRS and stakeholder needs |  | 0.5d | 2026-10-28 | 2026-10-28 | 67, 68 | 2026-10-30 | 2026-10-30 | 1d | start no earlier than 2026-10-28 |  | IR Salam; R Molefi | 4h | Not started - Phase 3 |
| 70 | 3.4.6 | Correct integration issues and acceptance gaps |  | 1d | 2026-10-28 | 2026-10-29 | 69 | 2026-11-02 | 2026-11-05 | 4d | start no earlier than 2026-10-28 |  | ME Kwetle; T Maqala; KG Moticoe; SI Ditabe; R Molelekwa | 20h | Not started - Phase 3 |
| 71 | 3.4.7 | Capture final mobile, web and shared-process screenshots |  | 0.5d | 2026-10-29 | 2026-10-29 | 70 |  |  |  | start no earlier than 2026-10-29 |  | SI Ditabe | 2h | Not started - Phase 3 |
| 72 | 3.4.8 | Recheck both shared processes and key permissions |  | 0.5d | 2026-10-29 | 2026-10-29 | 70 | 2026-11-06 | 2026-11-06 | 1d | start no earlier than 2026-10-29 |  | R Molefi; R Molelekwa; KO Selahla | 6h | Not started - Phase 3 |
| 73 | 3.4.9 | Milestone: working prototype checked and release frozen | milestone | 0d | 2026-10-29 | 2026-10-29 | 72, 71 | 2026-11-06 | 2026-11-06 | 0d | start no earlier than 2026-10-29 |  |  |  | Not started - Phase 3 |
| 74 | 3.5 | **Submission evidence, rehearsal and hand-in** |  | 6d | 2026-10-26 | 2026-11-02 |  | 2026-11-09 | 2026-11-13 | 5d |  |  |  | 46h | Remaining delivery |
| 75 | 3.5.1 | Draft implementation section and requirements-status mapping |  | 2d | 2026-10-26 | 2026-10-27 | 47 | 2026-11-09 | 2026-11-10 | 2d | start no earlier than 2026-10-26 |  | IR Salam | 8h | Not started - Phase 3 |
| 76 | 3.5.2 | Update repository README and backend setup scripts |  | 0.5d | 2026-10-28 | 2026-10-28 | 65 |  |  |  | start no earlier than 2026-10-28 |  | KG Moticoe | 2h | Not started - Phase 3 |
| 77 | 3.5.3 | Prepare demonstration story and individual speaking roles |  | 0.5d | 2026-10-28 | 2026-10-28 | 67 | 2026-11-10 | 2026-11-11 | 2d | start no earlier than 2026-10-28 |  | KO Selahla | 2h | Not started - Phase 3 |
| 78 | 3.5.4 | Update original tracker, actual contributions and group reflection |  | 0.5d | 2026-10-29 | 2026-10-29 | 69 |  |  |  | start no earlier than 2026-10-29 |  | R Molefi | 2h | Not started - Phase 3 |
| 79 | 3.5.5 | Update final Project progress and capture readable Gantt evidence |  | 0.5d | 2026-10-30 | 2026-10-30 | 73, 78 |  |  |  | start no earlier than 2026-10-30 |  | R Molefi | 2h | Not started - Phase 3 |
| 80 | 3.5.6 | Package matching repository, source ZIP and demo release |  | 0.5d | 2026-10-30 | 2026-10-30 | 73, 76 |  |  |  | start no earlier than 2026-10-30 |  | KG Moticoe | 2h | Not started - Phase 3 |
| 81 | 3.5.7 | Coordinator completes confidential individual contribution check |  | 0.25d | 2026-10-30 | 2026-10-30 | 73 |  |  |  | start no earlier than 2026-10-30 |  | IR Salam | 1h | Not started - Phase 3 |
| 82 | 3.5.8 | Finalise one SRS PDF with evidence, links and limitations |  | 0.5d | 2026-10-30 | 2026-10-30 | 75, 71, 79, 80 |  |  |  | start no earlier than 2026-10-30 |  | IR Salam | 2h | Not started - Phase 3 |
| 83 | 3.5.9 | Other seven members complete their individual contribution checks |  | 0.25d | 2026-10-30 | 2026-10-30 | 73 |  |  |  | start no earlier than 2026-10-30 |  | R Molefi; T Maqala; KG Moticoe; SI Ditabe; ME Kwetle; KO Selahla; R Molelekwa | 7h | Not started - Phase 3 |
| 84 | 3.5.10 | Milestone: complete submission pack ready | milestone | 0d | 2026-10-30 | 2026-10-30 | 82, 80, 79, 81, 83 |  |  |  | start no earlier than 2026-10-30 |  |  |  | Not started - Phase 3 |
| 85 | 3.5.11 | Rehearse live integrated demonstration with all eight members |  | 0.5d | 2026-11-02 | 2026-11-02 | 84, 77 | 2026-11-12 | 2026-11-12 | 1d | start no earlier than 2026-11-02 |  | R Molefi; IR Salam; T Maqala; KG Moticoe; SI Ditabe; ME Kwetle; KO Selahla; R Molelekwa | 16h | Not started - Phase 3 |
| 86 | 3.5.12 | Check ZIP contents, links and matching release version |  | 0.25d | 2026-11-02 | 2026-11-02 | 85 |  |  |  | start no earlier than 2026-11-02 |  | KG Moticoe | 1h | Not started - Phase 3 |
| 87 | 3.5.13 | Upload Group P Phase 3 submission and retain receipt |  | 0.25d | 2026-11-02 | 2026-11-02 | 86 | 2026-11-13 | 2026-11-13 | 1d | start no earlier than 2026-11-02 |  | IR Salam | 1h | Not started - Phase 3 |
| 88 | 3.5.14 | FINAL DEADLINE / All group submission files handed in | milestone | 0d | 2026-11-02 | 2026-11-02 | 87 | 2026-11-13 | 2026-11-13 | 0d | start no earlier than 2026-11-02 | 2026-11-02 |  |  | Not started - Phase 3 |

Notes:
- 56: Summary: dates and work roll up from child tasks.
- 57: Phase 3 not started at the 13 October status date. Re-estimated prototype effort; 4 hours per assigned member per weekday. Scheduled release dates preserve the resource-balanced delivery sequence. Work is an estimate, not a timesheet.
- 58: Phase 3 not started at the 13 October status date. Re-estimated prototype effort; 4 hours per assigned member per weekday. Scheduled release dates preserve the resource-balanced delivery sequence. Work is an estimate, not a timesheet.
- 59: Phase 3 not started at the 13 October status date. Re-estimated prototype effort; 4 hours per assigned member per weekday. Scheduled release dates preserve the resource-balanced delivery sequence. Work is an estimate, not a timesheet.
- 60: Phase 3 not started at the 13 October status date. Re-estimated prototype effort; 4 hours per assigned member per weekday. Scheduled release dates preserve the resource-balanced delivery sequence. Work is an estimate, not a timesheet.
- 61: Phase 3 not started at the 13 October status date. Re-estimated prototype effort; 4 hours per assigned member per weekday. Scheduled release dates preserve the resource-balanced delivery sequence. Work is an estimate, not a timesheet.
- 62: Phase 3 not started at the 13 October status date. Re-estimated prototype effort; 4 hours per assigned member per weekday. Scheduled release dates preserve the resource-balanced delivery sequence. Work is an estimate, not a timesheet.
- 63: Phase 3 not started at the 13 October status date. Re-estimated prototype effort; 4 hours per assigned member per weekday. Scheduled release dates preserve the resource-balanced delivery sequence. Work is an estimate, not a timesheet.
- 64: Summary: dates and work roll up from child tasks.
- 65: Phase 3 not started at the 13 October status date. Re-estimated prototype effort; 4 hours per assigned member per weekday. Scheduled release dates preserve the resource-balanced delivery sequence. Work is an estimate, not a timesheet.
- 66: Staff creates a targeted notice with a document; an authorised parent retrieves that same record and attachment. Capture real evidence. Phase 3 not started at the 13 October status date. Re-estimated prototype effort; 4 hours per assigned member per weekday. Scheduled release dates preserve the resource-balanced delivery sequence. Work is an estimate, not a timesheet.
- 67: Authorised staff updates a notice; parent client displays the updated shared record. Verify identity and audience remain correct. Phase 3 not started at the 13 October status date. Re-estimated prototype effort; 4 hours per assigned member per weekday. Scheduled release dates preserve the resource-balanced delivery sequence. Work is an estimate, not a timesheet.
- 68: Practical checking, not a mandatory formal test-document pack. Include wrong-grade and unauthorised access, empty/error states and invalid inputs. Phase 3 not started at the 13 October status date. Re-estimated prototype effort; 4 hours per assigned member per weekday. Scheduled release dates preserve the resource-balanced delivery sequence. Work is an estimate, not a timesheet.
- 69: Phase 3 not started at the 13 October status date. Re-estimated prototype effort; 4 hours per assigned member per weekday. Scheduled release dates preserve the resource-balanced delivery sequence. Work is an estimate, not a timesheet.
- 70: Protected correction allowance. Log unresolved limitations honestly if they cannot be resolved within approved scope. Phase 3 not started at the 13 October status date. Re-estimated prototype effort; 4 hours per assigned member per weekday. Scheduled release dates preserve the resource-balanced delivery sequence. Work is an estimate, not a timesheet.
- 71: Phase 3 not started at the 13 October status date. Re-estimated prototype effort; 4 hours per assigned member per weekday. Scheduled release dates preserve the resource-balanced delivery sequence. Work is an estimate, not a timesheet.
- 72: Phase 3 not started at the 13 October status date. Re-estimated prototype effort; 4 hours per assigned member per weekday. Scheduled release dates preserve the resource-balanced delivery sequence. Work is an estimate, not a timesheet.
- 73: Phase 3 not started at the 13 October status date. Re-estimated prototype effort; 4 hours per assigned member per weekday. Scheduled release dates preserve the resource-balanced delivery sequence. Work is an estimate, not a timesheet.
- 74: Summary: dates and work roll up from child tasks.
- 75: Retain Phase 1 and Phase 2 SRS sections and editable diagram links. Map approved requirements to real implemented functions; record changes and limitations. Phase 3 not started at the 13 October status date. Re-estimated prototype effort; 4 hours per assigned member per weekday. Scheduled release dates preserve the resource-balanced delivery sequence. Work is an estimate, not a timesheet.
- 76: One shared repository, mobile/ and web/ source folders, reproducible setup steps, database scripts and no credentials. Phase 3 not started at the 13 October status date. Re-estimated prototype effort; 4 hours per assigned member per weekday. Scheduled release dates preserve the resource-balanced delivery sequence. Work is an estimate, not a timesheet.
- 77: All eight members must understand the integrated solution and defend their own contributions. A recording does not replace attendance without approval. Phase 3 not started at the 13 October status date. Re-estimated prototype effort; 4 hours per assigned member per weekday. Scheduled release dates preserve the resource-balanced delivery sequence. Work is an estimate, not a timesheet.
- 78: Record actual work, challenges/actions and Phase 3 summary. Do not invent contributions. Phase 3 not started at the 13 October status date. Re-estimated prototype effort; 4 hours per assigned member per weekday. Scheduled release dates preserve the resource-balanced delivery sequence. Work is an estimate, not a timesheet.
- 79: Update actual progress when these tasks are performed, then include the final plan screenshot and editable plan. Phase 3 is correctly 0% in this 13 October planning snapshot. Phase 3 not started at the 13 October status date. Re-estimated prototype effort; 4 hours per assigned member per weekday. Scheduled release dates preserve the resource-balanced delivery sequence. Work is an estimate, not a timesheet.
- 80: Same version for GitHub, source ZIP and live demo. Include mobile/, web/, backend setup/scripts, and offline editable designs if needed. Phase 3 not started at the 13 October status date. Re-estimated prototype effort; 4 hours per assigned member per weekday. Scheduled release dates preserve the resource-balanced delivery sequence. Work is an estimate, not a timesheet.
- 81: Separate private student submission; do not place confidential checks in the shared group ZIP. Phase 3 not started at the 13 October status date. Re-estimated prototype effort; 4 hours per assigned member per weekday. Scheduled release dates preserve the resource-balanced delivery sequence. Work is an estimate, not a timesheet.
- 82: One final SRS: retain earlier sections, add Implementation and Final Prototype, screenshots, requirement mapping, repository link, source folders and final MS Project screenshot. Phase 3 not started at the 13 October status date. Re-estimated prototype effort; 4 hours per assigned member per weekday. Scheduled release dates preserve the resource-balanced delivery sequence. Work is an estimate, not a timesheet.
- 83: Each member separately completes the confidential individual requirement. This is an allocation, not a claim that it has already been submitted. Phase 3 not started at the 13 October status date. Re-estimated prototype effort; 4 hours per assigned member per weekday. Scheduled release dates preserve the resource-balanced delivery sequence. Work is an estimate, not a timesheet.
- 84: Phase 3 not started at the 13 October status date. Re-estimated prototype effort; 4 hours per assigned member per weekday. Scheduled release dates preserve the resource-balanced delivery sequence. Work is an estimate, not a timesheet.
- 85: Rehearsal scheduled for 2 November; actual assessed presentation slot must follow the lecturer timetable. All members must attend that assessed session. Phase 3 not started at the 13 October status date. Re-estimated prototype effort; 4 hours per assigned member per weekday. Scheduled release dates preserve the resource-balanced delivery sequence. Work is an estimate, not a timesheet.
- 86: Check Group P Phase 3.zip includes final SRS PDF, source ZIP, editable Project, tracker and required supporting files. Verify links open and credentials are excluded. Phase 3 not started at the 13 October status date. Re-estimated prototype effort; 4 hours per assigned member per weekday. Scheduled release dates preserve the resource-balanced delivery sequence. Work is an estimate, not a timesheet.
- 87: One designated member submits the group work to Blackboard. Submission date is confirmed; 12:00 is the internal target because no official cutoff time was supplied. Keep evidence of successful upload. Phase 3 not started at the 13 October status date. Re-estimated prototype effort; 4 hours per assigned member per weekday. Scheduled release dates preserve the resource-balanced delivery sequence. Work is an estimate, not a timesheet.
- 88: Confirmed final submission date: 2 November 2026. Assessed presentation attendance remains required at the lecturer-scheduled session. Phase 3 not started at the 13 October status date. Re-estimated prototype effort; 4 hours per assigned member per weekday. Scheduled release dates preserve the resource-balanced delivery sequence. Work is an estimate, not a timesheet.
